# 新咪表计划2014-10-20

How a schedule from MS Project changed from version to version. A marks actual dates.

## Version 1 (data date 2016-02-18, saved 2016-06-14, file 香港工作计划 2016-06-12.mpp)

Note of the change: 添加新资料 Signed-off-by: andyLJG <andylau_luo@163.com>

| ID | WBS | Task | Duration | Start | Finish | Predecessors | Total float | Constraint |
| --- | --- | --- | --- | --- | --- | --- | --- | --- |
| 1 |  | 总体项目顺序：美国、售后（温岭、泽国、泰顺）、香港、福州 | 1d? | 2016-06-13 | 2016-06-13 |  | 39.25d |  |
| 2 | 2 | **美国咪表项目** | 40.25d? | 2016-06-13 | 2016-08-08 |  | 0d |  |
| 3 |  | 需求分析 | 8h | 2016-06-13 | 2016-06-13 |  | 0d |  |
| 4 |  | 立项、计划 | 8h | 2016-06-14 | 2016-06-14 | 3 | 0d |  |
| 5 |  | 兼容2款投币器供电的原理图 | 14h | 2016-06-15 | 2016-06-16 | 4 | 5.75d |  |
| 6 |  | 兼容2款投币器供电的pcb | 56h | 2016-06-13 | 2016-06-21 |  | 9.5d |  |
| 7 |  | 兼容2款投币器供电的bom | 10h | 2016-06-22 | 2016-06-23 | 6 | 32d |  |
| 8 |  | 样板打样 | 40h | 2016-07-05 | 2016-07-12 | 6, 26 | 0d |  |
| 9 |  | 焊接5pcs | 56h | 2016-07-12 | 2016-07-21 | 8 | 0d |  |
| 10 |  | 咪表硬件调试 | 24h | 2016-07-21 | 2016-07-26 | 9 | 0d |  |
| 11 | 2.9 | **结构部分** | 2.5d | 2016-06-13 | 2016-06-15 |  | 37.75d |  |
| 12 |  | 图纸输入电脑 | 20h | 2016-06-13 | 2016-06-15 |  | 37.75d |  |
| 13 | 2.10 | **咪表程序** | 40.25d? | 2016-06-13 | 2016-08-08 |  | 0d |  |
| 14 |  | 配合测试的测试程序新显示屏完善 | 70h | 2016-07-26 | 2016-08-08 | 10 | 0d |  |
| 17 | 2.11 | **新充电控制板** | 16.25d | 2016-06-15 | 2016-07-07 |  | 0d |  |
| 18 |  | 方案设计 | 7h | 2016-06-15 | 2016-06-15 | 4 | 0d |  |
| 19 |  | 找材料（IC） | 7h | 2016-06-15 | 2016-06-16 | 18 | 0d |  |
| 20 |  | IC实验 | 4h | 2016-06-16 | 2016-06-17 | 19 | 0d |  |
| 21 |  | 设计原理图 | 10h | 2016-06-17 | 2016-06-20 | 20 | 0d |  |
| 22 |  | 充电部分BOM | 6h | 2016-06-20 | 2016-06-21 | 21 | 0d |  |
| 23 |  | 调试 | 7h | 2016-06-21 | 2016-06-22 | 22 | 0d |  |
| 24 |  | 测试（充电测试花费时间） | 14h | 2016-06-22 | 2016-06-23 | 23 | 0d |  |
| 25 |  | 修改原理图，修改BOM | 5h | 2016-06-23 | 2016-06-24 | 24 | 0d |  |
| 26 |  | pcb | 56h | 2016-06-24 | 2016-07-05 | 25 | 0d |  |
| 27 |  | bom定型 | 14h | 2016-07-05 | 2016-07-07 | 26 | 22d |  |
| 29 | 3 | **温岭-泽国** | 6.25d | 2016-06-13 | 2016-06-21 |  | 34d |  |
| 30 |  | 问题分析 | 10h | 2016-06-13 | 2016-06-14 |  | 16.5d |  |
| 31 |  | 问题修改、自测 | 20h | 2016-06-14 | 2016-06-16 | 30 | 34d |  |
| 32 |  | 送检测试、调整修改 | 20h | 2016-06-16 | 2016-06-21 | 31 | 34d |  |
| 33 | 4 | **泰顺** | 17.5d | 2016-07-05 | 2016-07-28 |  | 6.75d |  |
| 34 |  | 需求分析 | 10h | 2016-07-05 | 2016-07-06 | 46 | 6.75d |  |
| 35 |  | 程序修改 | 80h | 2016-07-06 | 2016-07-20 | 34 | 6.75d |  |
| 36 |  | 自测 | 20h | 2016-07-20 | 2016-07-22 | 35 | 6.75d |  |
| 37 |  | 送检、文档整理 | 10h | 2016-07-22 | 2016-07-25 | 36 | 6.75d |  |
| 38 |  | 调整修改、文件归档 | 20h | 2016-07-26 | 2016-07-28 | 37 | 6.75d |  |
| 41 | 5 | **香港咪表项目** | 25d? | 2016-06-13 | 2016-07-15 |  | 6.75d |  |
| 42 |  | 项目立项 | 8h | 2016-06-13 | 2016-06-13 |  | 6.75d | start no earlier than 2016-06-13 |
| 43 |  | 需求分析 | 24h | 2016-06-14 | 2016-06-16 | 42 | 6.75d | start no earlier than 2016-06-13 |
| 44 |  | 方案整理 | 32h | 2016-06-17 | 2016-06-22 | 43 | 6.75d |  |
| 45 |  | EPM与CCS的通讯协议 | 40h | 2016-06-23 | 2016-06-29 | 44 | 6.75d |  |
| 46 |  | PPP与CCS的通讯协议 | 24h | 2016-06-30 | 2016-07-04 | 45 | 6.75d |  |
| 47 |  | 原理图设计和整理 | 40h | 2016-06-23 | 2016-06-29 | 44 | 27.25d |  |
| 48 |  | PCB设计 | 80h | 2016-06-13 | 2016-06-24 |  | 30.25d |  |
| 49 |  | 打样 | 40h | 2016-06-13 | 2016-06-17 |  | 35.25d |  |
| 50 |  | BOM制作 | 40h | 2016-06-13 | 2016-06-17 |  | 35.25d |  |
| 51 |  | 样板焊接 | 40h | 2016-06-13 | 2016-06-17 |  | 35.25d |  |
| 52 |  | 样板调试 | 40h | 2016-06-13 | 2016-06-17 |  | 35.25d |  |
| 53 |  | 电池的充电模块设计 | 1d? | 2016-06-13 | 2016-06-13 |  | 39.25d |  |
| 54 |  | 结构设计 | 200h | 2016-06-13 | 2016-07-15 |  | 15.25d |  |
| 55 | 5.14 | **八达通模块** | 11.25d | 2016-06-13 | 2016-06-28 |  | 27d |  |
| 56 |  | 八达通模块程序编写 | 80h | 2016-06-13 | 2016-06-24 |  | 30.25d |  |
| 57 |  | 八达通模块程序调试 | 50h | 2016-06-13 | 2016-06-21 |  | 34d |  |
| 58 |  | 八达通模块程序接口调用和文件说明整理 | 90h | 2016-06-13 | 2016-06-28 |  | 27d |  |
| 59 | 5.15 | **银行卡模块** | 11d | 2016-06-13 | 2016-06-27 |  | 25.25d |  |
| 60 |  | 刷卡消费程序编写 | 24h | 2016-06-13 | 2016-06-15 |  | 25.25d |  |
| 61 |  | 参数设置程序编写 | 24h | 2016-06-16 | 2016-06-20 | 60 | 25.25d |  |
| 62 |  | 模块程序整理 | 8h | 2016-06-21 | 2016-06-21 | 61 | 25.25d |  |
| 63 |  | 会话程序移植 | 16h | 2016-06-22 | 2016-06-23 | 62 | 25.25d |  |
| 64 |  | 程序接口调用和文件说明整理 | 16h | 2016-06-24 | 2016-06-27 | 63 | 25.25d |  |
| 65 | 5.16 | **蓝牙模块** | 5d | 2016-06-13 | 2016-06-17 |  | 35.25d |  |
| 66 |  | 资料熟悉 | 24h | 2016-06-13 | 2016-06-15 |  | 37.25d |  |
| 67 |  | 程序编写 | 24h | 2016-06-13 | 2016-06-15 |  | 37.25d |  |
| 68 |  | 调试、测试 | 40h | 2016-06-13 | 2016-06-17 |  | 35.25d |  |
| 69 | 5.17 | **咪表程序** | 15d? | 2016-06-13 | 2016-07-01 |  | 25.25d |  |
| 70 |  | 框架编写 | 1d? | 2016-06-13 | 2016-06-13 |  | 39.25d |  |
| 71 |  | 费率编写 | 1d? | 2016-06-13 | 2016-06-13 |  | 35.25d |  |
| 72 |  | 银行卡模块程序移植 | 1d? | 2016-06-28 | 2016-06-28 | 71, 64 | 25.25d |  |
| 73 |  | 银行卡模块程序调试 | 1d? | 2016-06-29 | 2016-06-29 | 72 | 25.25d |  |
| 74 |  | 八达通模块程序移植 | 1d? | 2016-06-30 | 2016-06-30 | 73, 58 | 25.25d |  |
| 75 |  | 八达通模块程序调试 | 1d? | 2016-07-01 | 2016-07-01 | 74 | 25.25d |  |

| ID | WBS | Task | Duration | Start | Finish | Predecessors | Total float | Constraint |
| --- | --- | --- | --- | --- | --- | --- | --- | --- |
| 76 | 5.18 | **联调** | 5d | 2016-06-24 | 2016-06-30 |  | 23.25d |  |
| 77 |  | 系统联调 | 1d | 2016-06-24 | 2016-06-24 | 102 | 23.25d | start no earlier than 2015-03-05 |
| 78 |  | 自测、修改 | 1d | 2016-06-27 | 2016-06-27 | 77 | 23.25d |  |
| 79 |  | 程序优化、功能调试 | 3d | 2016-06-28 | 2016-06-30 | 78 | 26.25d |  |
| 80 |  | 送检文档编写、送检 | 1d | 2016-06-28 | 2016-06-28 | 78 | 23.25d | start no earlier than 2015-03-05 |
| 81 |  | 整机测试 | 5d | 2016-06-29 | 2016-07-05 | 80 | 23.25d |  |
| 82 | 5.21 | **说明书等文档编写** | 5d | 2016-06-29 | 2016-07-05 | 80 | 23.25d |  |
| 88 |  | 姚斌30H、 | 1.5d | 2016-06-13 | 2016-06-14 |  | 38.75d |  |
| 89 | 5.21.2 | **咪表嵌入式软件** | 9d | 2016-06-13 | 2016-06-23 |  | 23.25d |  |
| 90 |  | 各模块子程序整理 | 3d | 2016-06-13 | 2016-06-15 |  | 37.25d |  |
| 91 |  | 各模块子程序整理 | 3d | 2016-06-13 | 2016-06-15 |  | 23.25d |  |
| 92 |  | 费率编写 | 0.5d | 2016-06-16 | 2016-06-16 | 91 | 23.25d |  |
| 93 |  | 自发卡预买时泊车流程处理 | 1d | 2016-06-16 | 2016-06-17 | 92 | 23.25d |  |
| 94 |  | 自发卡相关记录处理 | 0.5d | 2016-06-17 | 2016-06-17 | 93 | 23.25d |  |
| 95 |  | 硬币流程编写 | 0.5d | 2016-06-20 | 2016-06-20 | 94 | 23.25d |  |
| 96 |  | 硬币相关记录整理 | 0.5d | 2016-06-20 | 2016-06-20 | 95 | 23.25d |  |
| 97 |  | SMS手机支付程序编写 | 5d | 2016-06-13 | 2016-06-17 |  | 34.75d |  |
| 98 |  | SMS手机支付相关记录整理 | 0.5d | 2016-06-20 | 2016-06-20 | 97 | 34.75d |  |
| 99 |  | MU509B模块程序移植 | 0.5d | 2016-06-21 | 2016-06-21 | 96 | 23.25d |  |
| 100 |  | 管理界面编写 | 1d | 2016-06-21 | 2016-06-22 | 99 | 23.25d |  |
| 101 |  | 应用程序升级流程编写 | 0.5d | 2016-06-22 | 2016-06-22 | 100 | 23.25d |  |
| 102 |  | 界面显示 | 1d | 2016-06-23 | 2016-06-23 | 101 | 23.25d |  |

## Version 2 (data date 2016-06-14, saved 2017-05-25, file B香港工作计划 2016-06-12.mpp)

Note of the change: 添加新资料 Signed-off-by: andyLJG <andylau_luo@163.com>

Last finish 2016-08-08 → 2016-09-29 (+52d).

Added:

| ID | Task | Duration | Start | Finish | Predecessors | Constraint | Resources |
| --- | --- | --- | --- | --- | --- | --- | --- |
| 33 | 自测、联调 | 20h | 2016-07-06 | 2016-07-08 | 32 |  | 罗家国 |
| 40 | 方案讨论、评审 | 8h | 2016-07-26 | 2016-07-27 | 39 |  | 罗家国 |
| 44 | 原理图评审 | 4h | 2016-08-09 | 2016-08-09 | 43 |  | 罗家国 |
| 52 | BOM、外发加工图纸 | 40h | 2016-06-22 | 2016-06-28 |  | start no earlier than 2016-06-22 | 赵三健 |
| 53 | 样机加工跟踪，安装调试 | 160h | 2016-06-29 | 2016-07-26 | 52 |  | 赵三健 |
| 54 | 整机安装调试 | 20h | 2016-07-27 | 2016-07-29 | 53 |  | 赵三健 |
| 72 | 整体流程编写 | 16h | 2016-08-12 | 2016-08-15 | 70 |  | 罗家国 |
| 73 | 费率移植、调试 | 10h | 2016-08-16 | 2016-08-17 | 72, 71 |  | 罗家国 |
| 76 | 蓝牙模块程序移植 | 16h | 2016-08-19 | 2016-08-22 | 75, 68 |  | 罗家国 |
| 77 | 蓝牙模块程序调试 | 16h | 2016-08-23 | 2016-08-24 | 76 |  | 罗家国 |
| 78 | 管理菜单编写 | 30h | 2016-08-25 | 2016-08-30 | 77 |  | 罗家国 |
| 79 | 显示字模、子程序编写 | 16h | 2016-08-30 | 2016-09-01 | 71, 78 |  | 赖政 |
| 80 | 记录发送、记录校验 | 16h | 2016-09-01 | 2016-09-05 | 79 |  | 罗家国 |
| 85 | 自测、功耗调试 | 10h | 2016-09-12 | 2016-09-13 | 84 |  | 罗家国 |
| 88 | 整机测试、反馈修改 | 80h | 2016-09-15 | 2016-09-29 | 87 |  | 工程部; 罗家国 |
| 89 | 说明书等文档编写、评审 | 20h | 2016-09-15 | 2016-09-19 | 87 |  | 罗家国; 赖政 |

Removed: 36 自测; 78 自测、修改; 81 整机测试; 82 说明书等文档编写; 88 姚斌30H、; 89 咪表嵌入式软件; 90 各模块子程序整理; 91 各模块子程序整理; 92 费率编写; 93 自发卡预买时泊车流程处理; 94 自发卡相关记录处理; 95 硬币流程编写; 96 硬币相关记录整理; 97 SMS手机支付程序编写; 98 SMS手机支付相关记录整理; 99 MU509B模块程序移植; 100 管理界面编写; 101 应用程序升级流程编写; 102 界面显示

Changed:

| ID | Task | Start | Finish | Duration | Total float | Predecessors | Other |
| --- | --- | --- | --- | --- | --- | --- | --- |
| 2 | **美国咪表项目** |  | 2016-08-08 → 2016-08-05 (-3d) | 40.25d? → 44.86d | 0d → 8.57d |  | resources none → 项目计划 |
| 3 | 需求分析 |  |  |  | 0d → 88.29d |  | resources none → 美国项目 |
| 4 | 立项、计划 | 2016-06-14 → 2016-06-13 (-1d) | 2016-06-14 → 2016-06-13 (-1d) |  | 0d → 8.57d | 3 → none |  |
| 5 | 兼容2款投币器供电的原理图 | 2016-06-15 → 2016-06-14 (-1d) | 2016-06-16 → 2016-06-15 (-1d) |  | 5.75d → 86.29d |  |  |
| 8 | 样板打样 | 2016-07-05 → 2016-07-04 (-1d) | 2016-07-12 → 2016-07-11 (-1d) |  | 0d → 8.57d | 6, 20 → 20, 7 |  |
| 9 | 焊接5pcs | 2016-07-12 → 2016-07-11 (-1d) | 2016-07-21 → 2016-07-20 (-1d) |  | 0d → 8.57d |  |  |
| 10 | 咪表硬件调试 | 2016-07-21 → 2016-07-20 (-1d) | 2016-07-26 → 2016-07-25 (-1d) |  | 0d → 8.57d |  |  |
| 11 | **新充电控制板** | 2016-06-15 → 2016-06-14 (-1d) | 2016-07-07 → 2016-07-06 (-1d) | 16.25d → 18.57d | 0d → 8.57d |  |  |
| 12 | 方案设计 | 2016-06-15 → 2016-06-14 (-1d) | 2016-06-15 → 2016-06-14 (-1d) |  | 0d → 8.57d |  |  |
| 13 | 找材料（IC） | 2016-06-15 → 2016-06-14 (-1d) | 2016-06-16 → 2016-06-15 (-1d) |  | 0d → 8.57d |  | resources none → 姚斌 |
| 14 | IC实验 | 2016-06-16 → 2016-06-15 (-1d) | 2016-06-17 → 2016-06-16 (-1d) |  | 0d → 8.57d |  | resources none → 姚斌 |
| 15 | 设计原理图 | 2016-06-17 → 2016-06-16 (-1d) | 2016-06-20 → 2016-06-17 (-3d) |  | 0d → 8.57d |  | resources none → 姚斌 |
| 16 | 充电部分BOM | 2016-06-20 → 2016-06-17 (-3d) | 2016-06-21 → 2016-06-20 (-1d) |  | 0d → 8.57d |  | resources none → 姚斌 |
| 17 | 调试 | 2016-06-21 → 2016-06-20 (-1d) | 2016-06-22 → 2016-06-21 (-1d) |  | 0d → 8.57d |  | resources none → 姚斌 |
| 18 | 测试（充电测试花费时间） | 2016-06-22 → 2016-06-21 (-1d) | 2016-06-23 → 2016-06-22 (-1d) |  | 0d → 8.57d |  | resources none → 姚斌 |
| 19 | 修改原理图，修改BOM | 2016-06-23 → 2016-06-22 (-1d) | 2016-06-24 → 2016-06-23 (-1d) |  | 0d → 8.57d |  |  |
| 20 | pcb | 2016-06-24 → 2016-06-23 (-1d) | 2016-07-05 → 2016-07-04 (-1d) |  | 0d → 8.57d |  |  |
| 21 | bom定型 | 2016-07-05 → 2016-07-04 (-1d) | 2016-07-07 → 2016-07-06 (-1d) |  | 22d → 65.43d |  |  |
| 22 | **结构部分** |  |  | 2.5d → 2.86d | 37.75d → 86.57d |  |  |
| 24 | **咪表程序** | 2016-06-13 → 2016-07-25 (+42d) | 2016-08-08 → 2016-08-05 (-3d) | 40.25d? → 10d | 0d → 8.57d |  | resources 黄登勇 → none |
| 25 | 配合测试的测试程序新显示屏完善 | 2016-07-26 → 2016-07-25 (-1d) | 2016-08-08 → 2016-08-05 (-3d) |  | 0d → 8.57d |  | resources none → 黄登勇 |
| 26 | **温岭-泽国** |  |  | 6.25d → 7.14d | 34d → 0d |  | resources none → 个人计划 |
| 27 | 问题分析 |  |  |  | 16.5d → 0d |  | resources none → 温岭泽国项目 |
| 28 | 问题修改、自测 |  |  |  | 34d → 0d |  | resources none → 罗家国 |
| 29 | 送检测试、调整修改 |  |  |  | 34d → 0d |  | resources none → 罗家国 |
| 30 | **泰顺** | 2016-07-05 → 2016-06-21 (-14d) | 2016-07-28 → 2016-07-14 (-14d) | 17.5d → 20d | 6.75d → 0d | none → 29 | resources none → 个人计划 |
| 31 | 需求分析 | 2016-07-05 → 2016-06-21 (-14d) | 2016-07-06 → 2016-06-22 (-14d) |  | 6.75d → 0d | 42 → 29 | resources none → 泰顺项目 |
| 32 | 程序修改 | 2016-07-06 → 2016-06-22 (-14d) | 2016-07-20 → 2016-07-06 (-14d) |  | 6.75d → 0d |  | resources none → 罗家国 |
| 34 | 送检、文档整理 | 2016-07-22 → 2016-07-11 (-11d) | 2016-07-25 → 2016-07-12 (-13d) |  | 6.75d → 0d | 自测 → 33 | resources none → 罗家国 |
| 35 | 调整修改、文件归档 | 2016-07-26 → 2016-07-12 (-14d) | 2016-07-28 → 2016-07-14 (-14d) |  | 6.75d → 0d |  | resources none → 罗家国 |
| 36 | **香港咪表项目** |  | 2016-07-15 → 2016-09-29 (+76d) | 25d? → 89.43d | 6.75d → 0d |  | resources none → 项目计划 |
| 37 | 项目立项 | 2016-06-13 → 2016-07-14 (+31d) | 2016-06-13 → 2016-07-15 (+32d) |  | 6.75d → 0d | none → 35 | constraint start no earlier than 2016-06-13 → start no earlier than 2016-06-14; resources none → 香港咪表项目 |
| 38 | 需求分析 | 2016-06-14 → 2016-07-15 (+31d) | 2016-06-16 → 2016-07-19 (+33d) | 24h → 16h | 6.75d → 0d |  |  |
| 39 | 方案整理 | 2016-06-17 → 2016-07-19 (+32d) | 2016-06-22 → 2016-07-26 (+34d) | 32h → 40h | 6.75d → 0d |  |  |
| 41 | EPM与CCS的通讯协议 | 2016-06-23 → 2016-07-27 (+34d) | 2016-06-29 → 2016-08-03 (+35d) |  | 6.75d → 0d | 39 → 40 |  |
| 42 | PPP与CCS的通讯协议 | 2016-06-30 → 2016-06-13 (-17d) | 2016-07-04 → 2016-06-15 (-19d) |  | 6.75d → 86d | 41 → none |  |
| 43 | 原理图设计和整理 | 2016-06-23 → 2016-08-03 (+41d) | 2016-06-29 → 2016-08-09 (+41d) | 40h → 30h | 27.25d → 0d | 39 → 41 |  |
| 45 | PCB设计 | 2016-06-13 → 2016-08-10 (+58d) | 2016-06-24 → 2016-08-23 (+60d) |  | 30.25d → 12.86d | none → 10, 44 |  |
| 46 | 打样 | 2016-06-13 → 2016-08-24 (+72d) | 2016-06-17 → 2016-08-30 (+74d) |  | 35.25d → 12.86d | none → 45 | resources 外包 → 外加工 |
| 47 | BOM制作 | 2016-06-13 → 2016-08-24 (+72d) | 2016-06-17 → 2016-08-30 (+74d) |  | 35.25d → 24.29d | none → 45 |  |
| 48 | 样板焊接 | 2016-06-13 → 2016-08-31 (+79d) | 2016-06-17 → 2016-09-06 (+81d) |  | 35.25d → 12.86d | none → 46, 41 | resources none → 吴密 |
| 49 | 样板调试 | 2016-06-13 → 2016-09-07 (+86d) | 2016-06-17 → 2016-09-13 (+88d) |  | 35.25d → 12.86d | none → 48 |  |
| 50 | 电池的充电模块设计 | 2016-06-13 → 2016-07-06 (+23d) | 2016-06-13 → 2016-07-11 (+28d) | 1d? → 30h | 39.25d → 65.43d | none → 11 |  |
| 51 | **结构设计** | 2016-06-13 → 2016-06-22 (+9d) | 2016-07-15 → 2016-07-29 (+14d) | 200h → 31.43d | 15.25d → 50d |  | resources 赵三健 → none |
| 55 | **八达通模块** | 2016-06-13 → 2016-08-05 (+53d) | 2016-06-28 → 2016-09-13 (+77d) | 11.25d → 31.43d | 27d → 8.57d |  | resources 黄登勇 → none |
| 56 | 八达通模块程序编写 | 2016-06-13 → 2016-08-05 (+53d) | 2016-06-24 → 2016-08-19 (+56d) |  | 30.25d → 8.57d | none → 25 | resources none → 黄登勇 |
| 57 | 八达通模块程序调试 | 2016-06-13 → 2016-08-19 (+67d) | 2016-06-21 → 2016-08-29 (+69d) |  | 34d → 8.57d | none → 56 | resources none → 黄登勇 |
| 58 | 八达通模块程序接口调用和文件说明整理 | 2016-06-13 → 2016-08-29 (+77d) | 2016-06-28 → 2016-09-13 (+77d) |  | 27d → 8.57d | none → 57 | resources none → 黄登勇 |
| 59 | **银行卡模块** |  |  | 11d → 12.57d | 25.25d → 28.29d |  | resources 赖政 → none |
| 60 | 刷卡消费程序编写 |  |  |  | 25.25d → 28.29d |  | resources none → 赖政 |
| 61 | 参数设置程序编写 |  |  |  | 25.25d → 28.29d |  | resources none → 赖政 |
| 62 | 模块程序整理 |  |  |  | 25.25d → 28.29d |  | resources none → 赖政 |
| 63 | 会话程序移植 |  |  |  | 25.25d → 28.29d |  | resources none → 赖政 |
| 64 | 程序接口调用和文件说明整理 |  |  |  | 25.25d → 28.29d |  | resources none → 赖政 |
| 65 | **蓝牙模块** | 2016-06-13 → 2016-06-28 (+15d) | 2016-06-17 → 2016-07-12 (+25d) | 5d → 12.57d | 35.25d → 28.29d |  |  |
| 66 | 资料熟悉 | 2016-06-13 → 2016-06-28 (+15d) | 2016-06-15 → 2016-06-30 (+15d) |  | 37.25d → 28.29d | none → 64 | resources none → 赖政 |
| 67 | 程序编写 | 2016-06-13 → 2016-07-01 (+18d) | 2016-06-15 → 2016-07-05 (+20d) |  | 37.25d → 28.29d | none → 66 | resources none → 赖政 |
| 68 | 调试、测试 | 2016-06-13 → 2016-07-06 (+23d) | 2016-06-17 → 2016-07-12 (+25d) |  | 35.25d → 28.29d | none → 67 | resources none → 赖政 |
| 69 | **咪表程序** | 2016-06-13 → 2016-07-13 (+30d) | 2016-07-01 → 2016-09-19 (+80d) | 15d? → 55.71d | 25.25d → 8.57d |  |  |
| 70 | 框架编写 | 2016-06-13 → 2016-08-10 (+58d) | 2016-06-13 → 2016-08-11 (+59d) | 1d? → 16h | 39.25d → 0d | none → 44 | resources none → 罗家国 |
| 71 | 费率编写 | 2016-06-13 → 2016-07-13 (+30d) | 2016-06-13 → 2016-07-26 (+43d) | 1d? → 80h | 35.25d → 28.29d | none → 68 | resources none → 赖政 |
| 74 | 银行卡模块程序移植 | 2016-06-28 → 2016-08-16 (+49d) | 2016-06-28 → 2016-08-16 (+49d) | 1d? → 8h | 25.25d → 0d | 71, 64 → 72, 64 | resources none → 罗家国 |
| 75 | 银行卡模块程序调试 | 2016-06-29 → 2016-08-17 (+49d) | 2016-06-29 → 2016-08-18 (+50d) | 1d? → 16h | 25.25d → 0d |  | resources none → 罗家国 |
| 81 | 八达通模块程序移植 | 2016-06-30 → 2016-09-13 (+75d) | 2016-06-30 → 2016-09-15 (+77d) | 1d? → 16h | 25.25d → 8.57d |  | resources none → 罗家国 |
| 82 | 八达通模块程序调试 | 2016-07-01 → 2016-09-15 (+76d) | 2016-07-01 → 2016-09-19 (+80d) | 1d? → 16h | 25.25d → 8.57d |  | resources none → 罗家国 |
| 83 | **联调** | 2016-06-24 → 2016-09-05 (+73d) | 2016-06-30 → 2016-09-15 (+77d) | 5d → 8.57d | 23.25d → 0d |  |  |
| 84 | 系统联调 | 2016-06-24 → 2016-09-05 (+73d) | 2016-06-24 → 2016-09-12 (+80d) | 1d → 40h | 23.25d → 0d | 界面显示 → 80 | resources none → 罗家国 |
| 86 | 程序优化、功能调试 | 2016-06-28 → 2016-09-14 (+78d) | 2016-06-30 → 2016-09-15 (+77d) | 3d → 10h | 26.25d → 11.43d | 自测、修改 → 85 | resources none → 罗家国 |
| 87 | 送检文档编写、送检 | 2016-06-28 → 2016-09-14 (+78d) | 2016-06-28 → 2016-09-15 (+79d) | 1d → 10h | 23.25d → 0d | 自测、修改 → 85 |  |
